# Schedule1

Schedule from MS Project, 2009-07-13 to 2010-06-11, A marks actual dates.
NSCL

## Calendars

- Standard: Mon-Fri 08:00-12:00, 13:00-17:00; Sat-Sun off.

## Resources

| Resource |
| --- |
| Vasu V |
| 0 |

## Schedule

| ID | WBS | Task | Type | Duration | Start | Finish | Predecessors | Complete | Remaining | Total slack | Free slack | Constraint | Resources | Work | Actual work |
| --- | --- | --- | --- | --- | --- | --- | --- | --- | --- | --- | --- | --- | --- | --- | --- |
| 1 | 1 | **FSEP** |  | 239.25d? | 2009-07-13 A | 2010-06-11 |  | 62% | 91.79d? | 0d |  |  |  | 707.2h | 449.3h |
| 2 | 1.1 | **Gap Analysis** |  | 12.5d? | 2009-07-22 A | 2009-08-07 A |  | 100% |  |  |  | start no earlier than 2009-07-22 |  | 40h | 40h |
| 3 | 1.1.1 | Study Current Processes |  | 2.5d? | 2009-07-22 A | 2009-07-24 A |  | 100% |  |  |  |  | Vasu V [40%] | 8h | 8h |
| 4 | 1.1.2 | Choose Process Model |  | 2.5d? | 2009-07-24 A | 2009-07-28 A | 3 | 100% |  |  |  |  | Vasu V [40%] | 8h | 8h |
| 5 | 1.1.3 | Evaluate Gap |  | 5d? | 2009-07-29 A | 2009-08-04 A | 4 | 100% |  |  |  |  | Vasu V [40%] | 16h | 16h |
| 6 | 1.1.4 | Gap Analysis Document | milestone | 2.5d? | 2009-08-05 A | 2009-08-07 A | 5 | 100% |  |  |  |  | Vasu V [40%] | 8h | 8h |
| 7 | 1.2 | **Process Development** |  | 108.75d? | 2009-08-07 A | 2010-01-07 | 2 | 85% | 16.19d? | 2.5d | 0d |  |  | 348h | 296.2h |
| 8 | 1.2.1 | Project Initiation |  | 5d? | 2009-08-26 A | 2009-09-01 A |  | 100% |  |  |  |  | Vasu V [40%] | 16h | 16h |
| 9 | 1.2.2 | Requirements Management |  | 5d? | 2009-09-02 A | 2009-09-08 A |  | 100% |  |  |  |  | Vasu V [40%] | 16h | 16h |
| 10 | 1.2.3 | Traceability |  | 5d? | 2009-09-09 A | 2009-09-15 A |  | 100% |  |  |  |  | Vasu V [40%] | 16h | 16h |
| 11 | 1.2.4 | SDLC Selection |  | 5d? | 2009-09-16 A | 2009-09-22 A |  | 100% |  |  |  |  | Vasu V [40%] | 16h | 16h |
| 12 | 1.2.5 | Effort/Cost Estimation |  | 5d? | 2009-09-23 A | 2009-09-29 A |  | 100% |  |  |  |  | Vasu V [40%] | 16h | 16h |
| 13 | 1.2.6 | Project Planning |  | 5d? | 2009-09-30 A | 2009-10-06 A |  | 100% |  |  |  |  | Vasu V [40%] | 16h | 16h |
| 14 | 1.2.7 | Architecture (HLD) |  | 5d? | 2009-10-07 A | 2009-10-13 A |  | 100% |  |  |  |  | Vasu V [40%] | 16h | 16h |
| 15 | 1.2.8 | Construction (LLD, conding, integration) |  | 5d? | 2009-10-14 A | 2009-10-20 A |  | 100% |  |  |  |  | Vasu V [40%] | 16h | 16h |
| 16 | 1.2.9 | Quality Assurance |  | 5d? | 2009-10-21 A | 2009-10-27 A |  | 100% |  |  |  |  | Vasu V [40%] | 16h | 16h |
| 17 | 1.2.10 | Release Management |  | 3.75d? | 2009-12-30 A | 2010-01-04 |  | 95% | 0.19d? | 2.75d |  |  | Vasu V [40%] | 12h | 11.4h |
| 18 | 1.2.11 | Deployment |  | 5d? | 2009-10-28 A | 2009-11-03 |  | 95% | 0.25d? | 46.5d |  |  | Vasu V [40%] | 16h | 15.2h |
| 19 | 1.2.12 | Configuration Management |  | 5d? | 2009-11-04 A | 2009-11-10 |  | 95% | 0.25d? | 41.25d |  |  | Vasu V [40%] | 16h | 15.2h |
| 20 | 1.2.13 | Defect Management |  | 5d? | 2009-11-11 A | 2009-11-17 |  | 90% | 0.5d? | 36.25d |  |  | Vasu V [40%] | 16h | 14.4h |
| 21 | 1.2.14 | Data Collection |  | 5d? | 2009-11-18 A | 2009-11-24 |  | 80% | 1d? | 31.25d |  |  | Vasu V [40%] | 16h | 12.8h |
| 22 | 1.2.15 | Quality Assurance |  | 5d? | 2009-11-25 A | 2009-12-01 |  | 80% | 1d? | 26.25d |  |  | Vasu V [40%] | 16h | 12.8h |
| 23 | 1.2.16 | Supplier Management |  | 5d? | 2009-12-02 A | 2009-12-08 |  | 88% | 0.62d? | 21.25d |  |  | Vasu V [40%] | 16h | 14h |
| 24 | 1.2.17 | Project Closure |  | 5d? | 2009-12-09 A | 2009-12-15 |  | 95% | 0.25d? | 16.5d |  |  | Vasu V [40%] | 16h | 15.2h |
| 25 | 1.2.18 | Archival |  | 5d? | 2009-12-16 A | 2009-12-22 |  | 90% | 0.5d? | 11.5d |  |  | Vasu V [40%] | 16h | 14.4h |
| 26 | 1.2.19 | Maintenance |  | 5d? | 2009-12-23 A | 2009-12-29 |  | 30% | 3.5d? | 6.5d |  |  | Vasu V [40%] | 16h | 4.8h |
| 27 | 1.2.20 | Weekly Status Meetings |  | 2.5d? | 2010-01-04 A | 2010-01-07 |  | 75% | 0.62d? | 2.5d |  |  | Vasu V [40%] | 8h | 6h |
| 28 | 1.2.21 | Training Material |  | 12.5d? | 2009-08-07 A | 2009-08-25 |  | 40% | 7.5d? | 96.5d |  |  | Vasu V [40%] | 40h | 16h |
| 29 | 1.2.22 | Quark 0.4 | milestone | 0d? | 2009-10-09 A | 2009-10-09 A |  | 100% |  |  |  | must finish on 2009-10-09 | Vasu V [40%] |  |  |
| 30 | 1.2.23 | Quark 0.5 | milestone | 0d? | 2009-10-23 A | 2009-10-23 A |  | 100% |  |  |  | must finish on 2009-10-23 | Vasu V [40%] |  |  |
| 31 | 1.2.24 | Quark 0.6 | milestone | 0d? | 2009-11-13 A | 2009-11-13 A |  | 100% |  |  |  | must finish on 2009-11-13 | Vasu V [40%] |  |  |
| 32 | 1.2.25 | Quark 0.7 | milestone | 0d? | 2009-11-27 A | 2009-11-27 A |  | 100% |  |  |  | must finish on 2009-11-27 | Vasu V [40%] |  |  |
| 33 | 1.2.26 | Quark 0.8 | milestone | 0d? | 2009-12-11 A | 2009-12-11 A |  | 100% |  |  |  | must finish on 2009-12-11 | Vasu V [40%] |  |  |
| 34 | 1.2.27 | Quark 0.9 | milestone | 0d? | 2009-12-30 A | 2009-12-30 A |  | 100% |  |  |  | must finish on 2009-12-30 | Vasu V [40%] |  |  |

| ID | WBS | Task | Type | Duration | Start | Finish | Predecessors | Complete | Remaining | Total slack | Constraint | Resources | Work | Actual work |
| --- | --- | --- | --- | --- | --- | --- | --- | --- | --- | --- | --- | --- | --- | --- |
| 35 | 1.3 | **Refinement** |  | 17.5d? | 2010-01-07 A | 2010-02-01 | 7 | 50% | 8.75d? | 0d |  |  | 56h | 28h |
| 36 | 1.3.1 | Quark 1.0 | milestone | 2.5d? | 2010-01-07 A | 2010-01-11 A |  | 100% |  |  |  | Vasu V [40%] | 8h | 8h |
| 37 | 1.3.2 | Process Tuning |  | 12.5d? | 2010-01-11 A | 2010-01-28 | 36 | 50% | 6.25d? | 0d |  | Vasu V [40%] | 40h | 20h |
| 38 | 1.3.3 | Quark 1.1 | milestone | 2.5d? | 2010-01-28 | 2010-02-01 | 37 |  |  | 0d |  | Vasu V [40%] | 8h |  |
| 39 | 1.4 | **Implementation** |  | 72.25d? | 2010-02-01 | 2010-05-12 | 35 |  |  | 0d |  |  | 87.2h |  |
| 40 | 1.4.1 | Tool Recommendations |  | 6.25d? | 2010-02-01 | 2010-02-09 |  |  |  | 0d |  | Vasu V [40%] | 20h |  |
| 41 | 1.4.2 | Migration Plan |  | 5d? | 2010-02-10 | 2010-02-16 | 40 |  |  | 0d |  | Vasu V [40%] | 16h |  |
| 42 | 1.4.3 | Steady State |  | 60d | 2010-02-17 | 2010-05-11 | 41 |  |  | 0d |  | Vasu V [10%] | 48h |  |
| 43 | 1.4.4 | Quark 2.0 | milestone | 1d? | 2010-05-12 | 2010-05-12 | 42 |  |  | 0d |  | Vasu V [40%] | 3.2h |  |
| 44 | 1.5 | **Evaluation** |  | 21.25d? | 2010-05-13 | 2010-06-11 | 39 |  |  | 0d |  |  | 76h |  |
| 45 | 1.5.1 | Internal Audit |  | 6.25d? | 2010-05-13 | 2010-05-21 |  |  |  | 0d |  | Vasu V [40%] | 20h |  |
| 46 | 1.5.2 | Internal Audit Report | milestone | 5d? | 2010-05-21 | 2010-05-28 | 45 |  |  | 0d |  | Vasu V [40%] | 16h |  |
| 47 | 1.5.3 | External Audit |  | 10d | 2010-05-28 | 2010-06-11 | 46 |  |  | 0d |  | Vasu V [50%] | 40h |  |
| 48 | 1.6 | Project Management |  | 125d? | 2009-07-13 A | 2010-01-04 |  | 85% | 18.62d? | 114.25d | start no earlier than 2009-07-13 | Vasu V [10%] | 100h | 85.1h |
