# CA Protocol on Rabbit (WC)

Schedule from MS Project, 2010-01-14 to 2010-09-14, costs in $.
NSCL

## Calendars

- Standard: Mon-Fri 08:00-12:00, 13:00-17:00; Sat-Sun off. Exceptions (off unless hours are given): 2010-05-31 (Memorial Day), 2010-07-05 (Independence Day), 2010-09-06 (Labor Day).

## Resources

| Resource | Rate |
| --- | --- |
| John Priller | 70 |
| Mark Davis | 70 |
| Vasu Vuppala | 70 |
| Software Licenses |  |

## Schedule

| ID | WBS | Task | Type | Duration | Start | Finish | Predecessors | Baseline start | Baseline finish | Baseline duration | Total slack | Free slack | Constraint | Resources | Work | Cost | Baseline cost |
| --- | --- | --- | --- | --- | --- | --- | --- | --- | --- | --- | --- | --- | --- | --- | --- | --- | --- |
| 1 | 1 | **CA Protocol on Rabbit (NC)** |  | 149.54d? | 2010-01-14 | 2010-08-13 |  | 2010-01-14 | 2010-08-13 | 149.54d? | 0d |  |  |  | 843h | 59,425 | 59,425 |
| 2 | 1.1 | **Project Management** |  | 149.54d? | 2010-01-14 | 2010-08-13 |  | 2010-01-14 | 2010-08-13 | 149.54d? | 0d |  |  |  | 174h | 12,180 | 12,180 |
| 3 | 1.1.1 | Initiation |  | 20d | 2010-01-14 | 2010-02-10 |  | 2010-01-14 | 2010-02-10 | 20d | 0.25d | 0d |  | Vasu Vuppala [19.4%] | 31h | 2,170 | 2,170 |
| 4 | 1.1.2 | Planning |  | 8.75d? | 2010-02-11 | 2010-02-23 | 3 | 2010-02-11 | 2010-02-23 | 8.75d? | 0.25d | 0d |  | Vasu Vuppala [50%] | 35h | 2,450 | 2,450 |
| 5 | 1.1.3 | Execution |  | 62.5d? | 2010-02-23 | 2010-06-11 | 4 | 2010-02-23 | 2010-06-11 | 62.5d? | 34.29d |  |  | Vasu Vuppala [10%] | 50h | 3,500 | 3,500 |
| 6 | 1.1.4 | Monitor and Control |  | 118.75d? | 2010-01-14 | 2010-08-11 |  | 2010-01-14 | 2010-08-11 | 118.75d? | 1.79d |  |  | Vasu Vuppala [4%] | 38h | 2,660 | 2,660 |
| 7 | 1.1.5 | Closure |  | 5d? | 2010-08-06 | 2010-08-13 | 35 | 2010-08-06 | 2010-08-13 | 5d? | 0d |  |  | Vasu Vuppala [50%] | 20h | 1,400 | 1,400 |
| 8 | 1.1.6 | Project Plan | milestone | 0d | 2010-02-26 | 2010-02-26 | 4 | 2010-02-26 | 2010-02-26 | 0d | 0d |  | must start on 2010-02-26 |  |  |  |  |
| 9 | 1.1.7 | Project Closure Report | milestone | 0d | 2010-08-13 | 2010-08-13 | 7 | 2010-08-13 | 2010-08-13 | 0d | 0d |  |  |  |  |  |  |
| 10 | 1.2 | **Training** |  | 24.62d? | 2010-02-23 | 2010-03-30 | 4 | 2010-02-23 | 2010-03-30 | 24.62d? | 0d |  |  |  | 209h | 15,045 | 15,045 |
| 11 | 1.2.1 | **DEBROS** |  | 15.12d? | 2010-02-23 | 2010-03-16 |  | 2010-02-23 | 2010-03-16 | 15.12d? | 0d |  |  |  | 165h | 11,965 | 11,965 |
| 12 | 1.2.1.1 | Content Development & Consultation |  | 12d? | 2010-02-23 | 2010-03-15 |  | 2010-02-23 | 2010-03-15 | 12d? | 0.88d |  |  | Mark Davis [50%] | 48h | 3,360 | 3,360 |
| 13 | 1.2.1.2 | **Presentations** |  | 14.88d? | 2010-02-24 | 2010-03-16 |  | 2010-02-24 | 2010-03-16 | 14.88d? | 0d |  |  |  | 9h | 630 | 630 |
| 14 | 1.2.1.2.1 | Presentation I |  | 0.62d? | 2010-02-24 | 2010-02-24 |  | 2010-02-24 | 2010-02-24 | 0.62d? | 0d |  | must start on 2010-02-24 | John Priller [20%]; Mark Davis [20%]; Vasu Vuppala [20%] | 3h | 210 | 210 |
| 15 | 1.2.1.2.2 | Presentation II |  | 1.88d? | 2010-02-26 | 2010-03-16 |  | 2010-02-26 | 2010-03-16 | 1.88d? | 0d |  | must start on 2010-02-26 | Vasu Vuppala [20%]; Mark Davis [20%]; John Priller [20%] | 3h | 210 | 210 |
| 16 | 1.2.1.2.3 | Presentation III |  | 1.25d? | 2010-03-01 | 2010-03-16 |  | 2010-03-01 | 2010-03-16 | 1.25d? | 0d |  | must start on 2010-03-01 | Vasu Vuppala [20%]; Mark Davis [20%]; John Priller [20%] | 3h | 210 | 210 |
| 17 | 1.2.1.3 | Procure Softools Rabbit WinIDE |  | 1d? | 2010-02-23 | 2010-02-24 |  | 2010-02-23 | 2010-02-24 | 1d? | 0.62d | 0d |  | Software Licenses [0.5%] |  | 415 | 415 |
| 18 | 1.2.1.4 | Practice Sessions |  | 13.5d? | 2010-02-24 | 2010-03-16 | 14, 17 | 2010-02-24 | 2010-03-16 | 13.5d? | 0.62d |  |  | John Priller [50%]; Vasu Vuppala [50%] | 108h | 7,560 | 7,560 |
| 19 | 1.2.2 | **Channel Access** |  | 9.5d? | 2010-03-16 | 2010-03-30 | 11 | 2010-03-16 | 2010-03-30 | 9.5d? | 0d |  |  |  | 44h | 3,080 | 3,080 |
| 20 | 1.2.2.1 | Content Development |  | 9.5d? | 2010-03-16 | 2010-03-30 |  | 2010-03-16 | 2010-03-30 | 9.5d? | 0d |  |  | Vasu Vuppala [50%] | 38h | 2,660 | 2,660 |
| 21 | 1.2.2.2 | **Presentations** |  | 3.5d? | 2010-03-19 | 2010-03-25 |  | 2010-03-19 | 2010-03-25 | 3.5d? | 3d |  |  |  | 6h | 420 | 420 |
| 22 | 1.2.2.2.1 | Presentation I |  | 0.25d? | 2010-03-19 | 2010-03-22 | 20SS+3d | 2010-03-19 | 2010-03-22 | 0.25d? | 3d | 0d |  | John Priller [50%]; Mark Davis [50%]; Vasu Vuppala [50%] | 3h | 210 | 210 |
| 23 | 1.2.2.2.2 | Presentation II |  | 0.25d? | 2010-03-25 | 2010-03-25 | 22FS+3d | 2010-03-25 | 2010-03-25 | 0.25d? | 3d |  |  | John Priller [50%]; Mark Davis [50%]; Vasu Vuppala [50%] | 3h | 210 | 210 |
| 24 | 1.2.3 | DEBROS Training Documentation | milestone | 0d | 2010-03-30 | 2010-03-30 | 11, 19 | 2010-03-30 | 2010-03-30 | 0d | 0d |  |  |  |  |  |  |
| 25 | 1.2.4 | CA Training Documentation | milestone | 0d | 2010-03-30 | 2010-03-30 | 24 | 2010-03-30 | 2010-03-30 | 0d | 0d |  |  |  |  |  |  |

| ID | WBS | Task | Type | Duration | Start | Finish | Predecessors | Baseline start | Baseline finish | Baseline duration | Total slack | Free slack | Resources | Work | Cost | Baseline cost |
| --- | --- | --- | --- | --- | --- | --- | --- | --- | --- | --- | --- | --- | --- | --- | --- | --- |
| 26 | 1.7 | **Requirements** |  | 4d? | 2010-03-30 | 2010-04-05 | 10 | 2010-03-30 | 2010-04-05 | 4d? | 91.67d |  |  | 16h | 1,120 | 1,120 |
| 27 | 1.7.1 | Software Requirements Spec | milestone | 4d? | 2010-03-30 | 2010-04-05 |  | 2010-03-30 | 2010-04-05 | 4d? | 91.67d |  | Vasu Vuppala [50%] | 16h | 1,120 | 1,120 |
| 28 | 1.3 | **Design** |  | 43.67d? | 2010-03-30 | 2010-06-01 | 10 | 2010-03-30 | 2010-06-01 | 43.67d? | 0d |  |  | 90h | 6,300 | 6,300 |
| 29 | 1.3.1 | **Architecture** |  | 8.5d? | 2010-03-30 | 2010-04-09 |  | 2010-03-30 | 2010-04-09 | 8.5d? | 0d |  |  | 40h | 2,800 | 2,800 |
| 30 | 1.3.1.1 | Concepts |  | 5d? | 2010-03-30 | 2010-04-06 |  | 2010-03-30 | 2010-04-06 | 5d? | 0d |  | Vasu Vuppala [50%] | 20h | 1,400 | 1,400 |
| 31 | 1.3.1.2 | Review |  | 0.5d | 2010-03-30 | 2010-03-30 |  | 2010-03-30 | 2010-03-30 | 0.5d | 8d |  | John Priller [50%]; Mark Davis [50%]; Vasu Vuppala [50%] | 6h | 420 | 420 |
| 32 | 1.3.1.3 | Documentation |  | 3.5d | 2010-04-06 | 2010-04-09 | 30 | 2010-04-06 | 2010-04-09 | 3.5d | 0d |  | Vasu Vuppala [50%] | 14h | 980 | 980 |
| 33 | 1.3.2 | Architecture Design | milestone | 0d | 2010-04-09 | 2010-04-09 | 32 | 2010-04-09 | 2010-04-09 | 0d | 87.67d |  |  |  |  |  |
| 34 | 1.3.3 | Low Level |  | 4.17d? | 2010-05-24 | 2010-06-01 | 36 | 2010-05-24 | 2010-06-01 | 4.17d? | 0d |  | John Priller [50%]; Mark Davis [50%]; Vasu Vuppala [50%] | 50h | 3,500 | 3,500 |
| 35 | 1.4 | **Implementation** |  | 82.67d? | 2010-04-09 | 2010-08-06 | 29 | 2010-04-09 | 2010-08-06 | 82.67d? | 0d |  |  | 213h | 14,910 | 14,910 |
| 36 | 1.4.1 | **Proof Of Concept** |  | 31d? | 2010-04-09 | 2010-05-24 |  | 2010-04-09 | 2010-05-24 | 31d? | 0d |  |  | 112h | 7,840 | 7,840 |
| 37 | 1.4.1.1 | Search |  | 9.5d? | 2010-04-09 | 2010-04-23 |  | 2010-04-09 | 2010-04-23 | 9.5d? | 0d |  | Vasu Vuppala [50%] | 38h | 2,660 | 2,660 |
| 38 | 1.4.1.2 | Beacons |  | 4.5d? | 2010-04-23 | 2010-04-29 | 37 | 2010-04-23 | 2010-04-29 | 4.5d? | 0d |  | Vasu Vuppala [50%] | 18h | 1,260 | 1,260 |
| 39 | 1.4.1.3 | Channel |  | 4d? | 2010-04-29 | 2010-05-05 | 38 | 2010-04-29 | 2010-05-05 | 4d? | 0d |  | Vasu Vuppala [50%] | 16h | 1,120 | 1,120 |
| 40 | 1.4.1.4 | Read |  | 4.25d? | 2010-05-05 | 2010-05-12 | 39 | 2010-05-05 | 2010-05-12 | 4.25d? | 0d |  | Vasu Vuppala [50%] | 17h | 1,190 | 1,190 |
| 41 | 1.4.1.5 | Analysis |  | 4.25d? | 2010-05-18 | 2010-05-24 | 40, 57 | 2010-05-18 | 2010-05-24 | 4.25d? | 0d |  | Vasu Vuppala [50%] | 17h | 1,190 | 1,190 |
| 42 | 1.4.1.6 | Review |  | 0.5d? | 2010-05-24 | 2010-05-24 | 41 | 2010-05-24 | 2010-05-24 | 0.5d? | 0d |  | John Priller [50%]; Mark Davis [50%]; Vasu Vuppala [50%] | 6h | 420 | 420 |
| 43 | 1.4.1.7 | Version 1.0 b0 | milestone | 0d | 2010-05-24 | 2010-05-24 | 42 | 2010-05-24 | 2010-05-24 | 0d | 0d |  |  |  |  |  |
| 44 | 1.4.2 | **Features** |  | 15.75d? | 2010-06-01 | 2010-06-22 | 34 | 2010-06-01 | 2010-06-22 | 15.75d? | 31.75d |  |  | 79h | 5,530 | 5,530 |
| 45 | 1.4.2.1 | Search |  | 3.75d? | 2010-06-01 | 2010-06-04 |  | 2010-06-01 | 2010-06-04 | 3.75d? | 31.75d | 0d | John Priller [50%] | 15h | 1,050 | 1,050 |
| 46 | 1.4.2.2 | Read |  | 3.75d? | 2010-06-04 | 2010-06-10 | 45 | 2010-06-04 | 2010-06-10 | 3.75d? | 31.75d | 0d | John Priller [50%] | 15h | 1,050 | 1,050 |
| 47 | 1.4.2.3 | Write |  | 4.25d? | 2010-06-10 | 2010-06-16 | 46 | 2010-06-10 | 2010-06-16 | 4.25d? | 31.75d | 0d | John Priller [50%] | 17h | 1,190 | 1,190 |
| 48 | 1.4.2.4 | **Events** |  | 15.75d? | 2010-06-01 | 2010-06-22 |  | 2010-06-01 | 2010-06-22 | 15.75d? | 31.75d |  |  | 32h | 2,240 | 2,240 |
| 49 | 1.4.2.4.1 | Events I |  | 4d? | 2010-06-01 | 2010-06-07 |  | 2010-06-01 | 2010-06-07 | 4d? | 43.5d |  | Vasu Vuppala [50%] | 16h | 1,120 | 1,120 |
| 50 | 1.4.2.4.2 | Events II |  | 4d? | 2010-06-16 | 2010-06-22 | 47 | 2010-06-16 | 2010-06-22 | 4d? | 31.75d |  | John Priller [50%] | 16h | 1,120 | 1,120 |

| ID | WBS | Task | Type | Duration | Start | Finish | Predecessors | Baseline start | Baseline finish | Baseline duration | Total slack | Resources | Work | Cost | Baseline cost |
| --- | --- | --- | --- | --- | --- | --- | --- | --- | --- | --- | --- | --- | --- | --- | --- |
| 51 | 1.4.3 | **Release Management** |  | 43.67d? | 2010-05-24 | 2010-07-27 |  | 2010-05-24 | 2010-07-27 | 43.67d? | 0d |  | 22h | 1,540 | 1,540 |
| 52 | 1.4.3.1 | Build |  | 3d? | 2010-05-24 | 2010-05-27 | 36 | 2010-05-24 | 2010-05-27 | 3d? | 38.17d | Vasu Vuppala [50%] | 12h | 840 | 840 |
| 53 | 1.4.3.2 | Package |  | 2.5d? | 2010-07-23 | 2010-07-27 | 66, 67, 52 | 2010-07-23 | 2010-07-27 | 2.5d? | 0d | Vasu Vuppala [50%] | 10h | 700 | 700 |
| 54 | 1.4.4 | Version 1.0 b1 | milestone | 0d | 2010-07-27 | 2010-07-27 | 53 | 2010-07-27 | 2010-07-27 | 0d | 0d |  |  |  |  |
| 55 | 1.4.5 | Version 1.0 | milestone | 0d | 2010-08-06 | 2010-08-06 | 60 | 2010-08-06 | 2010-08-06 | 0d | 0d |  |  |  |  |
| 56 | 1.5 | **QA** |  | 60.42d? | 2010-05-12 | 2010-08-06 |  | 2010-05-12 | 2010-08-06 | 60.42d? | 0d |  | 84h | 5,880 | 5,880 |
| 57 | 1.6.1 | **Test Benchmark** |  | 4d? | 2010-05-12 | 2010-05-18 | 40 | 2010-05-12 | 2010-05-18 | 4d? | 0d |  | 32h | 2,240 | 2,240 |
| 58 | 1.5.1.1 | DB file development |  | 2d? | 2010-05-12 | 2010-05-14 |  | 2010-05-12 | 2010-05-14 | 2d? | 2d | John Priller [50%]; Vasu Vuppala [50%] | 16h | 1,120 | 1,120 |
| 59 | 1.5.1.2 | IOC Setup |  | 4d? | 2010-05-12 | 2010-05-18 |  | 2010-05-12 | 2010-05-18 | 4d? | 0d | Vasu Vuppala [50%] | 16h | 1,120 | 1,120 |
| 60 | 1.5.2 | **System Level Test** |  | 8d? | 2010-07-27 | 2010-08-06 | 54 | 2010-07-27 | 2010-08-06 | 8d? | 0d |  | 52h | 3,640 | 3,640 |
| 61 | 1.5.2.1 | **8-port Power Supply Module Development** |  | 8d? | 2010-07-27 | 2010-08-06 |  | 2010-07-27 | 2010-08-06 | 8d? | 0d |  | 36h | 2,520 | 2,520 |
| 62 | 1.5.2.1.1 | Development |  | 8d? | 2010-07-27 | 2010-08-06 |  | 2010-07-27 | 2010-08-06 | 8d? | 0d | Vasu Vuppala [50%] | 32h | 2,240 | 2,240 |
| 63 | 1.5.2.1.2 | Consultation |  | 1d? | 2010-08-02 | 2010-08-03 |  | 2010-08-02 | 2010-08-03 | 1d? | 3d | Vasu Vuppala [50%] | 4h | 280 | 280 |
| 64 | 1.5.2.2 | Data Collection & Analysi |  | 4d? | 2010-07-27 | 2010-08-02 |  | 2010-07-27 | 2010-08-02 | 4d? | 4d | Vasu Vuppala [50%] | 16h | 1,120 | 1,120 |
| 65 | 1.6 | **Documentation** |  | 37d? | 2010-06-01 | 2010-07-23 | 34 | 2010-06-01 | 2010-07-23 | 37d? | 0d |  | 57h | 3,990 | 3,990 |
| 66 | 1.6.1 | Installation Manual |  | 5.75d? | 2010-06-01 | 2010-06-08 |  | 2010-06-01 | 2010-06-08 | 5.75d? | 0d | Vasu Vuppala [50%] | 23h | 1,610 | 1,610 |
| 67 | 1.6.2 | User Manual |  | 21.25d? | 2010-06-08 | 2010-07-23 | 66 | 2010-06-08 | 2010-07-23 | 21.25d? | 0d | Vasu Vuppala [20%] | 34h | 2,380 | 2,380 |
| 68 | 2 | Contingency |  | 21d? | 2010-08-13 | 2010-09-14 | 1 | 2010-08-13 | 2010-09-14 | 21d? | 0d | Vasu Vuppala [50%] | 84h | 5,880 | 5,880 |

Notes:
- 68: 10% Contingency
